# TT_ProjectSchedule

Schedule from MS Project, 2015-05-13 to 2015-09-02.
FPT

## Calendars

- Standard: Mon-Fri 08:00-12:00, 13:00-17:00; Sat-Sun off.

## Resources

| Resource |
| --- |
| DucHN |
| HaiDT |
| HoangNM |
| ThuyLM |
| LucPT |
| HieuTM |
| TEAM |
| DevTeam |
| DocTeam |

## Schedule

| ID | WBS | Task | Duration | Start | Finish | Predecessors | Total slack | Free slack | Resources | Work |
| --- | --- | --- | --- | --- | --- | --- | --- | --- | --- | --- |
| 1 | 1 | **Fly Away Plus** | 81d | 2015-05-13 | 2015-09-02 |  | 0d |  |  | 1568h |
| 2 | 1.1 | **Initiation** | 12d | 2015-05-13 | 2015-05-28 |  | 0d |  |  | 336h |
| 3 | 1.1.1 | Form up team roles | 0.5d | 2015-05-13 | 2015-05-13 |  | 11.5d |  | TEAM | 4h |
| 4 | 1.1.2 | Uniform idea meeting | 0.5d | 2015-05-13 | 2015-05-13 |  | 0.5d | 0d | TEAM | 4h |
| 5 | 1.1.3 | **Project Clarification** | 0.5d | 2015-05-13 | 2015-05-13 |  | 0.5d | 0d |  | 4h |
| 6 | 1.1.3.1 | Clarify project scope | 0.1d | 2015-05-13 | 2015-05-13 | 4 | 0.5d | 0d | TEAM | 0.8h |
| 7 | 1.1.3.2 | Clarify technical requirements | 0.1d | 2015-05-13 | 2015-05-13 | 6 | 0.5d | 0d | TEAM | 0.8h |
| 8 | 1.1.3.3 | Clarify rules in Team | 0.1d | 2015-05-13 | 2015-05-13 | 7 | 0.5d | 0d | TEAM | 0.8h |
| 9 | 1.1.3.4 | Clarify working environments | 0.1d | 2015-05-13 | 2015-05-13 | 8 | 0.5d | 0d | TEAM | 0.8h |
| 10 | 1.1.3.5 | Develop communications plan | 0.1d | 2015-05-13 | 2015-05-13 | 9 | 0.5d |  | DucHN | 0.8h |
| 11 | 1.1.4 | List project features | 1d | 2015-05-13 | 2015-05-13 |  | 11d |  | TEAM | 8h |
| 12 | 1.1.5 | Initiate Project structure | 1d | 2015-05-13 | 2015-05-13 |  | 11d |  | HaiDT | 8h |
| 13 | 1.1.6 | Create Coding conventions | 0.5d | 2015-05-13 | 2015-05-13 |  | 11.5d |  | HaiDT | 4h |
| 14 | 1.1.7 | **Environment** | 1d | 2015-05-14 | 2015-05-14 | 5 | 0.5d | 0d |  | 20h |
| 15 | 1.1.7.1 | Create guideline of installing and using environments | 0.5d | 2015-05-14 | 2015-05-14 |  | 0.5d | 0d | DucHN | 4h |
| 16 | 1.1.7.2 | Setup TortoiseGit | 0.5d | 2015-05-14 | 2015-05-14 | 15 | 0.5d |  | TEAM | 4h |
| 17 | 1.1.7.3 | Setup Visual Studio 2013 Ultimate | 0.5d | 2015-05-14 | 2015-05-14 |  | 1d |  | TEAM | 4h |
| 18 | 1.1.7.4 | Setup Microsoft SQL Server 2012 | 0.5d | 2015-05-14 | 2015-05-14 |  | 1d |  | TEAM | 4h |
| 19 | 1.1.7.5 | Training environments meeting | 0.5d | 2015-05-14 | 2015-05-14 |  | 1d |  | TEAM | 4h |
| 20 | 1.1.8 | **Technology research** | 9d | 2015-05-15 | 2015-05-27 | 14 | 1d |  |  | 96h |
| 21 | 1.1.8.1 | Research technologies to be used in project | 3d | 2015-05-15 | 2015-05-19 |  | 7d |  | DucHN | 24h |
| 22 | 1.1.8.2 | Study .NET MVC5 | 4d | 2015-05-15 | 2015-05-20 |  | 1d | 0d | DevTeam | 32h |
| 23 | 1.1.8.3 | Study Bootstrap | 1d | 2015-05-21 | 2015-05-21 | 22 | 1d | 0d | DevTeam | 8h |
| 24 | 1.1.8.4 | Study Javascript, jQuery | 4d | 2015-05-22 | 2015-05-27 | 23 | 1d |  | DevTeam | 32h |

| ID | WBS | Task | Type | Duration | Start | Finish | Predecessors | Total slack | Free slack | Resources | Work |
| --- | --- | --- | --- | --- | --- | --- | --- | --- | --- | --- | --- |
| 25 | 1.1.9 | **Project Introduction** |  | 5.5d | 2015-05-15 | 2015-05-22 |  | 0.5d | 0d |  | 44h |
| 26 | 1.1.9.1 | Create "Project Introduction" document |  | 3d | 2015-05-15 | 2015-05-19 | 14 | 0.5d | 0d | ThuyLM | 24h |
| 27 | 1.1.9.2 | Peer review "Project Introduction" document |  | 0.5d | 2015-05-20 | 2015-05-20 | 26 | 0.5d | 0d | DucHN | 4h |
| 28 | 1.1.9.3 | Update "Project Introduction" document draft |  | 1d | 2015-05-20 | 2015-05-21 | 27 | 0.5d | 0d | DucHN | 8h |
| 29 | 1.1.9.4 | Update "Project Introduction" based on instructor's comments |  | 1d | 2015-05-21 | 2015-05-22 | 28 | 0.5d | 0d | ThuyLM | 8h |
| 30 | 1.1.9.5 | Summit Project Introduction | milestone | 0d | 2015-05-22 | 2015-05-22 | 29 | 0.5d |  |  |  |
| 31 | 1.1.10 | Kick-off meeting |  | 0.5d | 2015-05-22 | 2015-05-22 | 25 | 4d |  | TEAM | 4h |
| 32 | 1.1.11 | **Q&A sheet** |  | 1.5d | 2015-05-22 | 2015-05-25 | 25 | 3d |  |  | 12h |
| 33 | 1.1.11.1 | Create Q&A |  | 0.5d | 2015-05-22 | 2015-05-22 |  | 3d | 0d | LucPT | 4h |
| 34 | 1.1.11.2 | Update Q&A sheet |  | 0.5d | 2015-05-25 | 2015-05-25 | 33 | 3d | 0d | LucPT | 4h |
| 35 | 1.1.11.3 | Translate Q&A sheet |  | 0.5d | 2015-05-25 | 2015-05-25 | 34 | 3d |  | LucPT | 4h |
| 36 | 1.1.12 | **Project Plan** |  | 12d | 2015-05-13 | 2015-05-28 |  | 0d |  |  | 96h |
| 37 | 1.1.12.1 | Develop project definition |  | 2d | 2015-05-13 | 2015-05-14 |  | 0d |  | DucHN | 16h |
| 38 | 1.1.12.2 | Work BreakDown Structure |  | 3d | 2015-05-15 | 2015-05-19 | 37 | 0d |  | DucHN | 24h |
| 39 | 1.1.12.3 | Create project schedule document |  | 3d | 2015-05-20 | 2015-05-22 | 38 | 0d |  | DucHN | 24h |
| 40 | 1.1.12.4 | Create project plan document |  | 1d | 2015-05-25 | 2015-05-25 | 39 | 0d |  | DucHN | 8h |
| 41 | 1.1.12.5 | Create CM Plan document |  | 0.5d | 2015-05-26 | 2015-05-26 | 40 | 0d |  | DucHN | 4h |
| 42 | 1.1.12.6 | Review & get comment of Project Plan |  | 0.5d | 2015-05-26 | 2015-05-26 | 41 | 0d |  | DucHN | 4h |
| 43 | 1.1.12.7 | Develop Risk Register |  | 0.5d | 2015-05-27 | 2015-05-27 | 42 | 1.5d |  | HieuTM | 4h |
| 44 | 1.1.12.8 | Update Project Plan documents (Schedule, Project Plan in MS Word, CM Plan) |  | 1d | 2015-05-27 | 2015-05-27 | 42 | 0d |  | DucHN | 8h |
| 45 | 1.1.12.9 | Create PP Review check list |  | 0.5d | 2015-05-28 | 2015-05-28 | 44 | 0d |  | ThuyLM | 4h |
| 46 | 1.1.12.10 | Summit Project Plan Final version | milestone | 0d | 2015-05-28 | 2015-05-28 | 45FS+0.5d | 0d |  |  |  |
| 47 | 1.1.13 | **Requirement** |  | 4d | 2015-05-22 | 2015-05-28 | 25 | 0.5d |  |  | 32h |
| 48 | 1.1.13.1 | **User Requirement** |  | 2d | 2015-05-22 | 2015-05-26 |  | 0.5d | 0d |  | 16h |
| 49 | 1.1.13.1.1 | Develop brief "User Requirements Specification" document |  | 1d | 2015-05-22 | 2015-05-25 |  | 0.5d | 0d | DocTeam | 8h |
| 50 | 1.1.13.1.2 | Peer review brief "User Requirements Specification" document |  | 0.5d | 2015-05-25 | 2015-05-25 | 49 | 0.5d | 0d | DocTeam | 4h |
| 51 | 1.1.13.1.3 | Update brief "User Requirements Specification" document |  | 0.5d | 2015-05-26 | 2015-05-26 | 50 | 0.5d |  | DocTeam | 4h |

| ID | WBS | Task | Type | Duration | Start | Finish | Predecessors | Total slack | Free slack | Resources | Work |
| --- | --- | --- | --- | --- | --- | --- | --- | --- | --- | --- | --- |
| 52 | 1.1.13.2 | **Mock-up screens** |  | 2d | 2015-05-26 | 2015-05-28 | 48 | 0.5d |  |  | 16h |
| 53 | 1.1.13.2.1 | Collect business requirements and processes |  | 0.5d | 2015-05-26 | 2015-05-26 |  | 0.5d | 0d | TEAM | 4h |
| 54 | 1.1.13.2.2 | Develop main features' mockup screens |  | 1d | 2015-05-27 | 2015-05-27 | 53 | 0.5d | 0d | DevTeam | 8h |
| 55 | 1.1.13.2.3 | Review and edit screen main features' mockup screens |  | 0.5d | 2015-05-28 | 2015-05-28 | 54 | 0.5d | 0d | DevTeam | 4h |
| 56 | 1.1.13.3 | Complete main features' mockup screens | milestone | 0d | 2015-05-28 | 2015-05-28 | 55 | 0.5d |  |  |  |
| 57 | 1.2 | **Solution** |  | 25d | 2015-05-29 | 2015-07-02 | 2 | 0d |  |  | 424h |
| 58 | 1.2.1 | **Sofware Requirement Specification [Chỉnh 3 tuần]** |  | 14d | 2015-05-29 | 2015-06-17 |  | 0d |  |  | 136h |
| 59 | 1.2.1.1 | **Non-functional Requirements Specification** |  | 1d | 2015-06-17 | 2015-06-17 | 71 | 11d |  |  |  |
| 60 | 1.2.1.1.1 | Develop User Interface requirements |  | 1d | 2015-06-17 | 2015-06-17 |  | 11d |  |  |  |
| 61 | 1.2.1.1.2 | Develop Performance requirements |  | 1d | 2015-06-17 | 2015-06-17 |  | 11d |  |  |  |
| 62 | 1.2.1.2 | **Functional Requirement Specification** |  | 13d | 2015-05-29 | 2015-06-16 |  | 0d |  |  | 136h |
| 63 | 1.2.1.2.1 | **Part 1** |  | 5d | 2015-05-29 | 2015-06-04 |  | 0d |  |  | 72h |
| 64 | 1.2.1.2.1.1 | Homepage Module |  | 2d | 2015-05-29 | 2015-06-01 |  | 2d |  | DucHN | 16h |
| 65 | 1.2.1.2.1.2 | User personal page Module |  | 1d | 2015-05-29 | 2015-05-29 |  | 0d |  | HoangNM | 8h |
| 66 | 1.2.1.2.1.3 | Admin Module |  | 1d | 2015-06-01 | 2015-06-01 | 65 | 2d |  | HaiDT | 8h |
| 67 | 1.2.1.2.1.4 | Search Module |  | 1d | 2015-06-01 | 2015-06-01 | 65 | 0d |  | DucHN | 8h |
| 68 | 1.2.1.2.1.5 | Login/Logout Module |  | 1d | 2015-06-02 | 2015-06-02 | 67 | 1d |  | HoangNM | 8h |
| 69 | 1.2.1.2.1.6 | Friend Module |  | 2d | 2015-06-02 | 2015-06-03 | 67 | 0d |  | HaiDT | 16h |
| 70 | 1.2.1.2.1.7 | Room module |  | 1d | 2015-06-04 | 2015-06-04 | 69 | 0d |  | DucHN | 8h |
| 71 | 1.2.1.2.2 | **Part 2** |  | 6d | 2015-06-09 | 2015-06-16 | 63FS+2d | 0d |  |  | 64h |
| 72 | 1.2.1.2.2.1 | Suggestion Module |  | 1d | 2015-06-09 | 2015-06-09 |  | 5d |  | HoangNM | 8h |
| 73 | 1.2.1.2.2.2 | Sharing Module |  | 1d | 2015-06-09 | 2015-06-09 |  | 0d |  | HaiDT | 8h |
| 74 | 1.2.1.2.2.3 | Report Module |  | 1d | 2015-06-10 | 2015-06-10 | 73 | 4d |  | DucHN | 8h |
| 75 | 1.2.1.2.2.4 | Planing trip helper Module |  | 3d | 2015-06-10 | 2015-06-12 | 73 | 0d |  | HoangNM | 24h |
| 76 | 1.2.1.2.2.5 | Chat module |  | 2d | 2015-06-15 | 2015-06-16 | 75 | 0d |  | HaiDT | 16h |

| ID | WBS | Task | Type | Duration | Start | Finish | Predecessors | Total slack | Free slack | Resources | Work |
| --- | --- | --- | --- | --- | --- | --- | --- | --- | --- | --- | --- |
| 77 | 1.2.2 | **System Architectural Design** |  | 5d | 2015-05-29 | 2015-06-04 |  | 8d | 0d |  | 32h |
| 78 | 1.2.2.1 | Define the system structure and unify system features |  | 2d | 2015-05-29 | 2015-06-01 |  | 4d | 0d | HaiDT | 16h |
| 79 | 1.2.2.2 | Study the common System Architetures |  | 1d | 2015-06-02 | 2015-06-02 | 78 | 4d | 0d | DucHN | 8h |
| 80 | 1.2.2.3 | Make choice of System Architeture |  | 1d | 2015-06-03 | 2015-06-03 | 79 | 4d | 0d | DevTeam | 8h |
| 81 | 1.2.2.4 | Complete Architecture Design version 1.0 | milestone | 0d | 2015-06-04 | 2015-06-04 | 80FS+1d | 4d |  |  |  |
| 82 | 1.2.3 | **Detailed Design** |  | 19d | 2015-06-08 | 2015-07-02 | 77 | 0d |  |  | 160h |
| 83 | 1.2.3.1 | **Database design** |  | 7d | 2015-06-17 | 2015-06-25 | 62 | 0d |  |  | 56h |
| 84 | 1.2.3.1.1 | Organize information to Database tables |  | 3d | 2015-06-17 | 2015-06-19 |  | 0d |  | HaiDT | 24h |
| 85 | 1.2.3.1.2 | Define tables' relationships |  | 1d | 2015-06-22 | 2015-06-22 | 84 | 0d |  | HaiDT | 8h |
| 86 | 1.2.3.1.3 | Apply normalization rules to Database design |  | 1d | 2015-06-23 | 2015-06-23 | 85 | 0d |  | DucHN | 8h |
| 87 | 1.2.3.1.4 | Refine Database design |  | 2d | 2015-06-24 | 2015-06-25 | 86 | 0d |  | HoangNM | 16h |
| 88 | 1.2.3.2 | Refine Database Design |  | 1d | 2015-06-26 | 2015-06-26 | 83 | 4d |  | DevTeam | 8h |
| 89 | 1.2.3.3 | **Screen design** |  | 3d | 2015-06-08 | 2015-06-10 |  | 11d |  |  | 24h |
| 90 | 1.2.3.3.1 | Create Screen Flow digram |  | 1d | 2015-06-08 | 2015-06-08 | 77FS+1d | 7d | 0d | ThuyLM | 8h |
| 91 | 1.2.3.3.2 | Create Screen Definition |  | 1d | 2015-06-09 | 2015-06-09 | 90 | 7d | 0d | HieuTM | 8h |
| 92 | 1.2.3.3.3 | Create Screen Design |  | 1d | 2015-06-10 | 2015-06-10 | 91 | 7d |  | LucPT | 8h |
| 93 | 1.2.3.4 | **Class/Component Design** |  | 5d | 2015-06-26 | 2015-07-02 | 89 | 0d |  |  | 72h |
| 94 | 1.2.3.4.1 | Create Data models |  | 1d | 2015-06-26 | 2015-06-26 | 83 | 0d |  | HaiDT | 8h |
| 95 | 1.2.3.4.2 | List components of the system |  | 1d | 2015-06-29 | 2015-06-29 | 94 | 0d |  | DucHN | 8h |
| 96 | 1.2.3.4.3 | Break modules into classes |  | 1d | 2015-06-30 | 2015-06-30 | 95 | 0d |  | DucHN | 8h |
| 97 | 1.2.3.4.4 | Create Class diagram |  | 2d | 2015-07-01 | 2015-07-02 | 96 | 0d |  | HaiDT | 16h |
| 98 | 1.2.3.4.5 | Create Class description document |  | 1d | 2015-07-01 | 2015-07-01 | 96 | 1d |  | HaiDT | 8h |
| 99 | 1.2.3.4.6 | Create Flow diagram |  | 1d | 2015-06-30 | 2015-06-30 | 95 | 0d |  | HoangNM | 8h |
| 100 | 1.2.3.4.7 | Create Progress Report 2 |  | 1d | 2015-07-01 | 2015-07-01 | 99 | 0d |  | DucHN | 8h |
| 101 | 1.2.3.4.8 | Create Design review checklists |  | 1d | 2015-07-02 | 2015-07-02 | 100 | 0d |  | ThuyLM | 8h |

| ID | WBS | Task | Type | Duration | Start | Finish | Predecessors | Total slack | Free slack | Resources | Work |
| --- | --- | --- | --- | --- | --- | --- | --- | --- | --- | --- | --- |
| 102 | 1.2.4 | **Project Management** |  | 2d | 2015-06-05 | 2015-06-08 | 77 | 18d |  |  | 40h |
| 103 | 1.2.4.1 | Update project plan |  | 2d | 2015-06-05 | 2015-06-08 |  | 14d |  | DucHN | 16h |
| 104 | 1.2.4.2 | Coding About/Contact Page |  | 2d | 2015-06-05 | 2015-06-08 |  | 14d |  | DucHN | 16h |
| 105 | 1.2.4.3 | Coding Login with Facebook and Google+ feature |  | 1d | 2015-06-05 | 2015-06-05 |  | 15d |  | HaiDT | 8h |
| 106 | 1.2.5 | **Test** |  | 7d | 2015-05-29 | 2015-06-08 |  | 18d |  |  | 56h |
| 107 | 1.2.5.1 | Create Test plan |  | 3d | 2015-05-29 | 2015-06-02 |  | 14d | 0d | ThuyLM | 24h |
| 108 | 1.2.5.2 | Review + Update Test plan |  | 1d | 2015-06-03 | 2015-06-03 | 107 | 14d | 0d | LucPT | 8h |
| 109 | 1.2.5.3 | Test plan approved | milestone | 0d | 2015-06-03 | 2015-06-03 | 108 | 14d | 0d |  |  |
| 110 | 1.2.5.4 | Start writing Test cases |  | 3d | 2015-06-04 | 2015-06-08 | 109 | 14d |  | DocTeam | 24h |
| 111 | 1.3 | **Construction** |  | 37d | 2015-07-02 | 2015-08-24 | 57 | 0d |  |  | 760h |
| 112 | 1.3.1 | **Design** |  | 3d | 2015-07-03 | 2015-07-07 |  | 0d |  |  | 24h |
| 113 | 1.3.1.1 | Refine Design document |  | 3d | 2015-07-03 | 2015-07-07 |  | 0d |  | HaiDT | 24h |
| 114 | 1.3.2 | **Coding** |  | 17d | 2015-07-08 | 2015-07-30 | 112 | 0d |  |  | 248h |
| 115 | 1.3.2.1 | Build prototype |  | 2d | 2015-07-08 | 2015-07-09 |  | 0d |  | DevTeam | 16h |
| 116 | 1.3.2.2 | Prototype approved | milestone | 0d | 2015-07-09 | 2015-07-09 | 115 | 0d |  |  |  |
| 117 | 1.3.2.3 | **Coding product (Continue)** |  | 13d | 2015-07-10 | 2015-07-28 | 116 | 0d |  |  | 232h |
| 118 | 1.3.2.3.1 | Develop UI |  | 1w | 2015-07-10 | 2015-07-16 |  | 0d |  | DucHN | 40h |
| 119 | 1.3.2.3.2 | Develop objects |  | 2d | 2015-07-10 | 2015-07-13 | 118SS | 0d |  | HaiDT | 16h |
| 120 | 1.3.2.3.3 | Create system documentation |  | 3d | 2015-07-10 | 2015-07-14 | 119SS | 12d |  | HoangNM | 24h |
| 121 | 1.3.2.3.4 | **Coding Modules** |  | 10d | 2015-07-15 | 2015-07-28 | 119FS+1d | 0d |  |  | 152h |
| 122 | 1.3.2.3.4.1 | **Part 1** |  | 5d | 2015-07-15 | 2015-07-21 |  | 0d |  |  | 88h |
| 123 | 1.3.2.3.4.1.1 | Homepage Module |  | 2d | 2015-07-15 | 2015-07-16 |  | 0d |  | DucHN | 16h |
| 124 | 1.3.2.3.4.1.2 | User personal page Module |  | 1d | 2015-07-17 | 2015-07-17 | 123 | 0d |  | HaiDT | 8h |
| 125 | 1.3.2.3.4.1.3 | Admin Module |  | 2d | 2015-07-15 | 2015-07-16 | 123SS | 0d |  | HoangNM | 16h |
| 126 | 1.3.2.3.4.1.4 | Search Module |  | 1d | 2015-07-17 | 2015-07-17 | 125 | 0d |  | DucHN | 8h |
| 127 | 1.3.2.3.4.1.5 | Login/Logout Module |  | 1d | 2015-07-17 | 2015-07-17 | 126SS | 0d |  | HaiDT | 8h |
| 128 | 1.3.2.3.4.1.6 | Friend Module |  | 2d | 2015-07-20 | 2015-07-21 | 124 | 0d |  | HoangNM | 16h |
| 129 | 1.3.2.3.4.1.7 | Room module |  | 2d | 2015-07-20 | 2015-07-21 | 127 | 0d |  | DucHN | 16h |

| ID | WBS | Task | Type | Duration | Start | Finish | Predecessors | Total slack | Free slack | Resources | Work |
| --- | --- | --- | --- | --- | --- | --- | --- | --- | --- | --- | --- |
| 130 | 1.3.2.3.4.2 | **Part 2** |  | 4d | 2015-07-23 | 2015-07-28 | 122FS+1d | 0d |  |  | 64h |
| 131 | 1.3.2.3.4.2.1 | Suggestion Module |  | 2d | 2015-07-23 | 2015-07-24 |  | 0d |  | HaiDT | 16h |
| 132 | 1.3.2.3.4.2.2 | Sharing Module |  | 1d | 2015-07-27 | 2015-07-27 | 131 | 0d |  | HoangNM | 8h |
| 133 | 1.3.2.3.4.2.3 | Report Module |  | 1d | 2015-07-28 | 2015-07-28 | 132 | 0d |  | DucHN | 8h |
| 134 | 1.3.2.3.4.2.4 | Chat module |  | 2d | 2015-07-23 | 2015-07-24 | 131SS | 0d |  | HaiDT | 16h |
| 135 | 1.3.2.3.4.2.5 | Planing trip helper Module |  | 2d | 2015-07-27 | 2015-07-28 | 134 | 0d |  | HoangNM | 16h |
| 136 | 1.3.2.4 | Product development completes | milestone | 0d | 2015-07-30 | 2015-07-30 | 121FS+2d | 0d |  |  |  |
| 137 | 1.3.3 | **Testing** |  | 37d | 2015-07-02 | 2015-08-24 | 106 | 0d |  |  | 304h |
| 138 | 1.3.3.1 | **Writing Test cases (Continue)** |  | 15d | 2015-07-03 | 2015-07-23 |  | 22d |  |  | 104h |
| 139 | 1.3.3.1.1 | Create Integration Test Case |  | 1w | 2015-07-03 | 2015-07-09 |  | 22d | 0d | ThuyLM | 40h |
| 140 | 1.3.3.1.2 | Update and review Integration Test Case |  | 3d | 2015-07-14 | 2015-07-16 | 139FS+2d | 22d | 0d | HieuTM | 24h |
| 141 | 1.3.3.1.3 | Create System Test Case |  | 3d | 2015-07-17 | 2015-07-21 | 140 | 22d | 0d | DocTeam | 24h |
| 142 | 1.3.3.1.4 | Update and review System Test Case |  | 2d | 2015-07-22 | 2015-07-23 | 141 | 22d |  | DocTeam | 16h |
| 143 | 1.3.3.2 | Writing Test cases completes | milestone | 0d | 2015-07-02 | 2015-07-02 |  | 37d |  |  |  |
| 144 | 1.3.3.3 | **Execute Test** |  | 17d | 2015-07-31 | 2015-08-24 | 114 | 0d |  |  | 200h |
| 145 | 1.3.3.3.1 | **Execute Test Part 1** |  | 8d | 2015-07-31 | 2015-08-11 |  | 0d |  |  | 96h |
| 146 | 1.3.3.3.1.1 | Execute Component Test |  | 2d | 2015-07-31 | 2015-08-03 |  | 0d |  | DocTeam | 16h |
| 147 | 1.3.3.3.1.2 | Fix bug Component Test |  | 2d | 2015-08-04 | 2015-08-05 | 146 | 4d |  | DocTeam | 16h |
| 148 | 1.3.3.3.1.3 | Execute Integration Test |  | 2d | 2015-08-04 | 2015-08-05 | 146 | 0d |  | DocTeam | 16h |
| 149 | 1.3.3.3.1.4 | Fix bug Integration Test |  | 2d | 2015-08-06 | 2015-08-07 | 148 | 2d |  | DocTeam | 16h |
| 150 | 1.3.3.3.1.5 | Execute System Test |  | 2d | 2015-08-06 | 2015-08-07 | 148 | 0d |  | DocTeam | 16h |
| 151 | 1.3.3.3.1.6 | Fix bug System Test |  | 2d | 2015-08-10 | 2015-08-11 | 150 | 0d |  | DocTeam | 16h |
| 152 | 1.3.3.3.2 | **Execute Test Part 2** |  | 8d | 2015-08-12 | 2015-08-21 | 145 | 0d |  |  | 96h |
| 153 | 1.3.3.3.2.1 | Execute Component Test |  | 2d | 2015-08-12 | 2015-08-13 |  | 0d |  | DocTeam | 16h |
| 154 | 1.3.3.3.2.2 | Fix bug Component Test |  | 2d | 2015-08-14 | 2015-08-17 | 153 | 5d |  | DocTeam | 16h |
| 155 | 1.3.3.3.2.3 | Execute Integration Test |  | 2d | 2015-08-14 | 2015-08-17 | 153 | 0d |  | DocTeam | 16h |
| 156 | 1.3.3.3.2.4 | Fix bug Integration Test |  | 2d | 2015-08-18 | 2015-08-19 | 155 | 3d |  | DocTeam | 16h |
| 157 | 1.3.3.3.2.5 | Execute System Test |  | 2d | 2015-08-18 | 2015-08-19 | 155 | 0d |  | DocTeam | 16h |
| 158 | 1.3.3.3.2.6 | Fix bug System Test |  | 2d | 2015-08-20 | 2015-08-21 | 157 | 0d |  | DocTeam | 16h |
| 159 | 1.3.3.3.3 | Create Test Report first verstion |  | 1d | 2015-08-24 | 2015-08-24 | 158 | 0d |  | DocTeam | 8h |
| 160 | 1.3.3.3.4 | Complete Testing | milestone | 0d | 2015-08-24 | 2015-08-24 | 159 | 0d |  |  |  |

| ID | WBS | Task | Duration | Start | Finish | Predecessors | Total slack | Free slack | Resources | Work |
| --- | --- | --- | --- | --- | --- | --- | --- | --- | --- | --- |
| 161 | 1.3.4 | **User Manual** | 2d | 2015-07-31 | 2015-08-03 | 114 | 15d |  |  | 24h |
| 162 | 1.3.4.1 | Create Installation guideline | 1d | 2015-07-31 | 2015-07-31 |  | 15d | 0d | DucHN | 8h |
| 163 | 1.3.4.2 | Create User guideline | 1d | 2015-07-31 | 2015-07-31 | 162SS | 15d | 0d | HaiDT | 8h |
| 164 | 1.3.4.3 | Review + Update guidelines | 1d | 2015-08-03 | 2015-08-03 | 163 | 15d |  | DucHN | 8h |
| 165 | 1.3.5 | **Manage development** | 5d | 2015-07-08 | 2015-07-14 | 114SS | 29d |  |  | 160h |
| 166 | 1.3.5.1 | **Manage scope/cost/time** | 5d | 2015-07-08 | 2015-07-14 |  | 29d |  |  | 80h |
| 167 | 1.3.5.1.1 | Monitor product changes | 1w | 2015-07-08 | 2015-07-14 |  | 29d |  | DucHN | 40h |
| 168 | 1.3.5.1.2 | Monitor project changes | 1w | 2015-07-08 | 2015-07-14 |  | 29d |  | DucHN | 40h |
| 169 | 1.3.5.2 | **Manage communications** | 1d | 2015-07-08 | 2015-07-08 |  | 33d |  |  | 40h |
| 170 | 1.3.5.2.1 | **Implement communications methods and strategies** | 1d | 2015-07-08 | 2015-07-08 |  | 33d |  |  | 8h |
| 171 | 1.3.5.2.1.1 | Select tools | 1d | 2015-07-08 | 2015-07-08 |  | 33d |  | DucHN | 8h |
| 172 | 1.3.5.2.2 | **Distribute information** | 1d | 2015-07-08 | 2015-07-08 |  | 33d |  |  | 24h |
| 173 | 1.3.5.2.2.1 | Attend team meeting | 1d | 2015-07-08 | 2015-07-08 |  | 33d |  | TEAM | 8h |
| 174 | 1.3.5.2.2.2 | Create status reports | 1d | 2015-07-08 | 2015-07-08 |  | 33d |  | HoangNM | 8h |
| 175 | 1.3.5.2.2.3 | Create Weekly Report | 1d | 2015-07-08 | 2015-07-08 |  | 33d |  | DucHN | 8h |
| 176 | 1.3.5.2.3 | Resolve communications problems | 1d | 2015-07-08 | 2015-07-08 |  | 33d |  | DucHN | 8h |
| 177 | 1.3.5.3 | **Manage quality control** | 1d | 2015-07-08 | 2015-07-08 |  | 33d |  |  | 16h |
| 178 | 1.3.5.3.1 | Monitor product quality | 1d | 2015-07-08 | 2015-07-08 |  | 33d |  | DucHN | 8h |
| 179 | 1.3.5.3.2 | **Monitor project quality** | 1d | 2015-07-08 | 2015-07-08 |  | 33d |  |  | 8h |
| 180 | 1.3.5.3.2.1 | Implement process improvements | 1d | 2015-07-08 | 2015-07-08 |  | 33d |  | DucHN | 8h |
| 181 | 1.3.5.4 | **Manage risk** | 1d | 2015-07-08 | 2015-07-08 |  | 33d |  |  | 16h |
| 182 | 1.3.5.4.1 | Monitor risks | 1d | 2015-07-08 | 2015-07-08 |  | 33d |  | DucHN | 8h |
| 183 | 1.3.5.4.2 | Specify responses | 1d | 2015-07-08 | 2015-07-08 |  | 33d |  | DucHN | 8h |
| 184 | 1.3.5.5 | Manage integration | 1d | 2015-07-08 | 2015-07-08 |  | 33d |  | DucHN | 8h |

| ID | WBS | Task | Duration | Start | Finish | Predecessors | Total slack | Resources | Work |
| --- | --- | --- | --- | --- | --- | --- | --- | --- | --- |
| 185 | 1.4 | **Termination** | 7d | 2015-08-25 | 2015-09-02 | 111 | 0d |  | 48h |
| 186 | 1.4.1 | **Pre-Closing** | 2d | 2015-08-25 | 2015-08-26 |  | 0d |  | 16h |
| 187 | 1.4.1.1 | Training presentation | 2d | 2015-08-25 | 2015-08-26 |  | 0d | TEAM | 16h |
| 188 | 1.4.2 | **Closing** | 4d | 2015-08-28 | 2015-09-02 | 186FS+1d | 0d |  | 32h |
| 189 | 1.4.2.1 | Prepare for presentation | 3d | 2015-08-28 | 2015-09-01 |  | 0d | TEAM | 24h |
| 190 | 1.4.2.2 | Represent Capstone Project and Completed | 1d | 2015-09-02 | 2015-09-02 | 189 | 0d | TEAM | 8h |
